# 商家助手

Schedule from MS Project, 2015-05-22 to 2015-06-01.

## Calendars

- 标准: Mon-Fri 08:00-12:00, 13:00-17:00; Sat-Sun off.

## Resources

| Resource |
| --- |
| 冷星 |
| 米凯 |

## Schedule

| ID | WBS | Task | Type | Duration | Start | Finish | Predecessors | Total slack | Resources | Work |
| --- | --- | --- | --- | --- | --- | --- | --- | --- | --- | --- |
| 1 | 1 | **商家助手V2第二个迭代** |  | 7d | 2015-05-22 | 2015-06-01 |  | 0d |  | 104h |
| 2 | 1.1 | **UDTF函数** |  | 1d | 2015-05-22 | 2015-05-22 |  | 0d |  | 8h |
| 3 | 1.1.1 | UDTF目标页面非店铺解析 | manual | 0.5d | 2015-05-22 | 2015-05-22 |  |  | 冷星 | 4h |
| 4 | 1.1.2 | UDTF来源页面店铺解析 | manual | 0.5d | 2015-05-22 | 2015-05-22 | 3 |  | 冷星 | 4h |
| 5 | 1.2 | **商品top20分析** |  | 2d | 2015-05-22 | 2015-05-25 |  |  |  | 16h |
| 6 | 1.2.1 | 商品汇总 | manual | 1d | 2015-05-22 | 2015-05-22 |  |  | 米凯 | 8h |
| 7 | 1.2.2 | SKU汇总 | manual | 1d | 2015-05-25 | 2015-05-25 | 6 |  | 米凯 | 8h |
| 8 | 1.3 | **店内流量分析** |  | 4d | 2015-05-25 | 2015-05-28 |  | 0d |  | 56h |
| 9 | 1.3.1 | 整体情况 | manual | 1d | 2015-05-26 | 2015-05-26 | 7 |  | 米凯 | 8h |
| 10 | 1.3.2 | **页面情况** |  | 4d | 2015-05-25 | 2015-05-28 |  | 0d |  | 48h |
| 11 | 1.3.2.1 | 店铺数据汇总（天） | manual | 1d | 2015-05-27 | 2015-05-27 | 9 |  | 米凯 | 8h |
| 12 | 1.3.2.2 | 店铺数据汇总（小时） | manual | 1d | 2015-05-28 | 2015-05-28 | 11 |  | 米凯 | 8h |
| 13 | 1.3.2.3 | **前后路径** |  | 4d | 2015-05-25 | 2015-05-28 |  | 0d |  | 32h |
| 14 | 1.3.2.3.1 | 来源页到店铺页 | manual | 2d | 2015-05-25 | 2015-05-26 | 4 |  | 冷星 | 16h |
| 15 | 1.3.2.3.2 | 店铺页到去向页 | manual | 2d | 2015-05-27 | 2015-05-28 | 14 |  | 冷星 | 16h |
| 16 | 1.4 | 单元测试 | manual | 1d | 2015-05-29 | 2015-05-29 | 15 |  | 冷星; 米凯 | 16h |
| 17 | 1.5 | UAT转生产 | manual | 1d | 2015-06-01 | 2015-06-01 | 16 |  | 米凯 | 8h |
